# Szene

Schedule from MS Project, 2006-02-27 to 2006-03-07, A marks actual dates.
Hewlett-Packard

## Calendars

- Standard: Mon-Fri 08:00-12:00, 13:00-17:00; Sat-Sun off.

## Schedule

| ID | WBS | Task | Duration | Start | Finish | Predecessors | Complete | Remaining | Total slack | Free slack | Constraint |
| --- | --- | --- | --- | --- | --- | --- | --- | --- | --- | --- | --- |
| 1 | 1 | **Library Preparation** | 3d? | 2006-02-27 A | 2006-03-01 A |  | 100% |  |  |  |  |
| 2 | 1.1 | MSVC | 1d? | 2006-02-27 A | 2006-02-27 A |  | 100% |  |  |  | start no earlier than 2006-02-27 |
| 3 | 1.2 | DJGPP | 2d | 2006-02-28 A | 2006-03-01 A |  | 100% |  |  |  |  |
| 6 | 2 | **Matedit2** | 4d? | 2006-03-02 A | 2006-03-07 | 1 | 58% | 1.68d? | 0d |  |  |
| 7 | 2.1 | Depui Integration | 1d? | 2006-03-02 A | 2006-03-02 A |  | 100% |  |  |  |  |
| 8 | 2.2 | Alle Parameter editierbar | 2d | 2006-03-03 A | 2006-03-06 | 7 | 66% | 0.68d | 0d |  |  |
| 9 | 2.3 | Szene laden / speichern | 1d? | 2006-03-07 | 2006-03-07 | 8 |  |  | 0d |  |  |
| 11 | 3 | **Szene** | 5d? | 2006-02-28 A | 2006-03-06 | 1 | 20% | 4d? | 1d |  |  |
| 12 | 3.1 | Dir cleanup | 1d? | 2006-02-28 A | 2006-02-28 A |  | 100% |  |  |  |  |
| 13 | 3.2 | Depui Integration | 1d? | 2006-03-02 | 2006-03-02 | 12 |  |  | 1d | 0d |  |
| 14 | 3.3 | File select | 1d? | 2006-03-03 | 2006-03-03 | 13 |  |  | 1d | 0d |  |
| 15 | 3.4 | **Controller** | 1d? | 2006-03-06 | 2006-03-06 | 14 |  |  | 1d |  |  |
| 16 | 3.4.1 | Walk | 1d? | 2006-03-06 | 2006-03-06 |  |  |  | 1d |  |  |
| 17 | 3.4.2 | Fly | 1d? | 2006-03-06 | 2006-03-06 |  |  |  | 1d |  |  |
| 19 | 4 | **Fly** | 1d | 2006-03-02 A | 2006-03-02 A | 1 | 100% |  |  |  |  |
| 20 | 4.1 | Anpassung neue DJGPP Version | 4h | 2006-03-02 A | 2006-03-02 A |  | 100% |  |  |  | start no earlier than 2006-03-02 |
| 21 | 4.2 | Palettenproblem | 4h | 2006-03-02 A | 2006-03-02 A | 20 | 100% |  |  |  |  |

Notes:
- 2: Kompilierung aller Bibliotheken mit MSVC 6.0: / ·Depui 2.0 / ·Expat-1.95.2 / ·GRX2.4.3 / ·Plush1.2.0
- 3: Kompilierung aller Bibliotheken mit DJGPP2.03: / ·Depui 2.0 / ·Expat-1.95.2 / ·GRX2.4.3 / ·Plush1.2.0
- 8: ·Ambient/Specular/Diffuse / ·Shininess/Transparent / ·Texturen
